# SI OPS

Schedule from GanttProject, 2023-12-01 to 2024-04-16.
Holidays every year on 01-01, 05-01, 05-08, 07-14, 08-15, 11-01, 11-11, 12-25

## Calendars

- Project calendar: Mon-Fri working; Sat-Sun off. Exceptions (off unless hours are given): 2023-12-26 to 2023-12-28 (Fin d'année), 2023-12-29, 2024-04-01 (Lundi de Pâques).

## Schedule

| ID | WBS | Task | Type | Duration | Start | Finish |
| --- | --- | --- | --- | --- | --- | --- |
| 1 | 1 | **Analyse** |  | 16d | 2023-12-01 | 2023-12-22 |
| 2 | 1.1 | Récupérer référentiels des deux applications existante |  | 6d | 2023-12-01 | 2023-12-08 |
| 3 | 1.2 | Validation par le pôle projets |  | 10d | 2023-12-11 | 2023-12-22 |
| 4 | 1.3 | Validation du workflow et vision claire de l'IHM |  | 16d | 2023-12-01 | 2023-12-22 |
| 5 | 2 | **Infrastructure** |  | 40d | 2023-12-04 | 2024-02-05 |
| 6 | 2.1 | Rédaction DEB et EBS |  | 19d | 2023-12-04 | 2024-01-05 |
| 7 | 2.2 | Création environnement qualif STIG |  | 19d | 2023-12-04 | 2024-01-05 |
| 8 | 2.3 | Création environnement prod STIG |  | 30d | 2023-12-18 | 2024-02-05 |
| 9 | 3 | SIRD créer demande d'interface référentiels |  | 14d | 2023-12-11 | 2024-01-05 |
| 10 | 4 | **Développement** |  | 75d | 2023-12-01 | 2024-03-22 |
| 11 | 4.1 | DEV LOT 1 création modèle de données |  | 16d | 2023-12-01 | 2023-12-22 |
| 12 | 4.2 | DEV LOT 1 Création de la demande |  | 19d | 2023-12-11 | 2024-01-12 |
| 13 | 4.3 | DEV LOT 1 Escalade de la demande |  | 19d | 2024-01-02 | 2024-01-26 |
| 14 | 4.4 | Livraison lot 1 (Qualif) | milestone | 0d | 2024-01-29 | 2024-01-29 |
| 15 | 4.5 | Recette et correctifs lot 1 |  | 15d | 2024-01-29 | 2024-02-16 |
| 16 | 4.6 | DEV LOT 2 Délégation de la demande |  | 28d | 2024-01-22 | 2024-02-28 |
| 17 | 4.7 | DEV LOT 2 Arbitrage |  | 18d | 2024-02-05 | 2024-02-28 |
| 18 | 4.8 | DEV LOT 2 Notification Neo |  | 18d | 2024-02-05 | 2024-02-28 |
| 19 | 4.9 | Livraison lot 2 | milestone | 0d | 2024-02-29 | 2024-02-29 |
| 20 | 4.10 | Recette et correctifs lot 2 |  | 17d | 2024-02-29 | 2024-03-22 |
| 21 | 5 | **SSO** |  | 57d | 2023-12-05 | 2024-02-29 |
| 22 | 5.1 | SSO determination de la liste de codes unités utilisatrices |  | 9d | 2023-12-05 | 2023-12-15 |
| 23 | 5.2 | SSO Préparation par le BCOF d'un modèle pour le SSO basé sur la liste des codes unités utilisatrices |  | 9d | 2023-12-18 | 2024-01-05 |
| 24 | 5.3 | SSO Raccordement SSO QUAL |  | 20d | 2024-01-02 | 2024-01-29 |
| 25 | 5.4 | SSO Raccordement SSO PROD |  | 24d | 2024-01-29 | 2024-02-29 |
| 26 | 6 | VABF |  | 9d | 2024-03-25 | 2024-04-05 |
| 27 | 7 | Installation en production | milestone | 0d | 2024-04-03 | 2024-04-03 |
| 28 | 8 | VSR |  | 9d | 2024-04-03 | 2024-04-15 |
| 29 | 9 | Mise en production V1 | milestone | 0d | 2024-04-16 | 2024-04-16 |
